# final_final

Schedule from MS Project, 2015-04-27 to 2015-08-20, costs in $.
Toshiba

## Calendars

- Estándar: Mon-Fri 09:00-13:00, 15:00-19:00; Sat-Sun off. Exceptions (off unless hours are given): 2015-05-02 09:00-13:00, 15:00-19:00, 2015-05-09 09:00-13:00, 15:00-19:00, 2015-05-16 09:00-13:00, 15:00-19:00, 2015-05-23 09:00-13:00, 15:00-19:00, 2015-05-30 09:00-13:00, 15:00-19:00, 2015-06-06 09:00-13:00, 15:00-19:00, 2015-06-13 09:00-13:00, 15:00-19:00, 2015-06-27 09:00-13:00, 15:00-19:00, 2015-07-04 09:00-13:00, 15:00-19:00, 2015-07-25 09:00-13:00, 15:00-19:00, 2015-08-01 09:00-13:00, 15:00-19:00, 2015-08-08 09:00-13:00, 15:00-19:00, 2015-08-15 09:00-13:00, 15:00-19:00.

## Resources

| Resource | Rate |
| --- | --- |
| AEGG(Lider de proyecto) | 107 |
| EBR(Analista) | 93 |
| SHR(Diseñadora) | 77 |
| AEGG(Programador) | 70 |
| EBR(Tester) | 65 |

## Schedule

| ID | WBS | Task | Duration | Start | Finish | Predecessors | Total slack | Free slack | Constraint | Resources | Work | Cost |
| --- | --- | --- | --- | --- | --- | --- | --- | --- | --- | --- | --- | --- |
| 1 | 1 | **TECNO-WEB SITE** | 97d | 2015-04-27 | 2015-08-20 |  |  |  |  |  | 738.99h | 59,273.3 |
| 2 | 1.1 | **1 Planeación** | 13d | 2015-04-27 | 2015-05-11 | 15 |  |  |  |  | 168h | 15,768 |
| 3 | 1.1.1 | 1.1 Entrevista con la institución | 1d | 2015-04-27 | 2015-04-27 |  | 0d |  |  | AEGG(Lider de proyecto) | 8h | 856 |
| 4 | 1.1.2 | 1.2 Investigación inicial e identificación de necesidades | 1d | 2015-04-28 | 2015-04-28 | 3 | 0d |  | start no earlier than 2015-04-28 | AEGG(Lider de proyecto) | 8h | 856 |
| 5 | 1.1.3 | 1.3 No se especifica bien el alcance del proyecto. | 1d? | 2015-04-29 | 2015-04-29 | 4 | 0d |  | start no earlier than 2015-04-29 | AEGG(Lider de proyecto) | 8h | 856 |
| 6 | 1.1.4 | 1.4 Tiempo y costos | 2d | 2015-04-30 | 2015-05-01 | 5 | 0d |  | start no earlier than 2015-04-30 | AEGG(Lider de proyecto) | 16h | 1,712 |
| 7 | 1.1.5 | 1.5 Acta de proyecto | 1d | 2015-05-02 | 2015-05-02 | 6 | 0d |  | start no earlier than 2015-05-01 | AEGG(Lider de proyecto); AEGG(Programador); EBR(Analista); EBR(Tester); SHR(Diseñadora) | 40h | 3,296 |
| 8 | 1.1.6 | 1.6 Minuta de apertura | 1d | 2015-05-04 | 2015-05-04 | 7 | 0d |  | start no earlier than 2015-05-01 | AEGG(Lider de proyecto); AEGG(Programador); EBR(Analista); EBR(Tester); SHR(Diseñadora) | 40h | 3,296 |
| 9 | 1.1.7 | 1.7 Definición del ciclo de vida | 1d | 2015-05-05 | 2015-05-05 | 8 | 0d |  | start no earlier than 2015-05-02 | SHR(Diseñadora) | 8h | 616 |
| 10 | 1.1.8 | 1.8 Políticas del cliente y desarrollador | 1d | 2015-05-06 | 2015-05-06 | 9 | 0d |  | start no earlier than 2015-05-05 | AEGG(Lider de proyecto) | 8h | 856 |
| 11 | 1.1.9 | 1.9 Definición del WBS | 1d | 2015-05-07 | 2015-05-07 | 10 | 0d |  | start no earlier than 2015-05-06 | AEGG(Lider de proyecto) | 8h | 856 |
| 12 | 1.1.10 | 1.10 No hay suficiente personal disponible para el proyecto | 1d | 2015-05-08 | 2015-05-08 | 11 | 0d |  | start no earlier than 2015-05-08 | AEGG(Lider de proyecto) | 8h | 856 |
| 13 | 1.1.11 | 1.11 Plan de proyecto | 1d | 2015-05-09 | 2015-05-09 | 12 | 0d |  | start no earlier than 2015-05-09 | AEGG(Lider de proyecto) | 8h | 856 |
| 14 | 1.1.12 | 1.12 Funcionalidad necesaria que no puede ser implementada usando los métodos y herramientas seleccionadas. El calendario de reserva para mejorar las herramientas de productividad es sobreestimado. | 1d | 2015-05-11 | 2015-05-11 | 13 | 0d |  |  | AEGG(Lider de proyecto) | 8h | 856 |
| 15 | 1.2 | **2 Análisis** | 16d | 2015-05-12 | 2015-05-29 | 34 |  |  |  |  | 113h | 10,509 |
| 16 | 1.2.1 | **2.1 Elicitacion** | 6d | 2015-05-12 | 2015-05-18 |  |  |  |  |  | 48h | 4,464 |
| 17 | 1.2.1.1 | 2.1.1 Investigación inicial e identificación de las necesidades de la empresa | 1d | 2015-05-12 | 2015-05-12 |  | 5d | 0d |  | EBR(Analista) | 8h | 744 |
| 18 | 1.2.1.2 | 2.1.2 Evaluar los requerimientos | 1d | 2015-05-13 | 2015-05-13 | 17 | 78d | 0d | start no earlier than 2015-05-13 | EBR(Analista) | 8h | 744 |
| 19 | 1.2.1.3 | 2.1.3 Definición de la estructura de la solución | 2d | 2015-05-14 | 2015-05-15 | 18 | 78d | 0d | start no earlier than 2015-05-14 | EBR(Analista) | 16h | 1,488 |
| 20 | 1.2.1.4 | 2.1.4 Clasificacion de los Requerimientos funcionales y no funcionales | 1d | 2015-05-16 | 2015-05-16 | 19 | 78d | 0d | start no earlier than 2015-05-16 | EBR(Analista) | 8h | 744 |
| 21 | 1.2.1.5 | 2.1.5 Definir los procesos del sistema | 1d | 2015-05-18 | 2015-05-18 | 20 | 78d |  | start no earlier than 2015-05-18 | EBR(Analista) | 8h | 744 |
| 22 | 1.2.2 | **2.2 Especificación** | 4d | 2015-05-19 | 2015-05-22 |  |  |  |  |  | 17h | 1,581 |
| 23 | 1.2.2.1 | 2.2.1 Estudio y valides del proyecto | 0.5h | 2015-05-19 | 2015-05-19 |  | 75.88d | 0.94d | start no earlier than 2015-05-19 | EBR(Analista) | 0.5h | 46.5 |
| 24 | 1.2.2.2 | 2.2.2 Evaluar los requerimientos | 0.5h | 2015-05-20 | 2015-05-20 | 23 | 74.94d | 0.94d | start no earlier than 2015-05-20 | EBR(Analista) | 0.5h | 46.5 |
| 25 | 1.2.2.3 | 2.2.3 Evaluar los procesos | 1d | 2015-05-21 | 2015-05-21 | 24 | 74d | 0d | start no earlier than 2015-05-21 | EBR(Analista) | 8h | 744 |
| 26 | 1.2.2.4 | 2.2.4 Evaluar la estructura | 1d | 2015-05-22 | 2015-05-22 | 25 | 74d |  | start no earlier than 2015-05-22 | EBR(Analista) | 8h | 744 |

| ID | WBS | Task | Duration | Start | Finish | Predecessors | Total slack | Free slack | Constraint | Resources | Work | Cost |
| --- | --- | --- | --- | --- | --- | --- | --- | --- | --- | --- | --- | --- |
| 27 | 1.2.3 | **2.3 Gestión** | 6d | 2015-05-23 | 2015-05-29 |  |  |  |  |  | 48h | 4,464 |
| 28 | 1.2.3.1 | 2.3.1 Priorizar requerimientos | 1d | 2015-05-23 | 2015-05-23 |  | 68d | 0d | start no earlier than 2015-05-23 | EBR(Analista) | 8h | 744 |
| 29 | 1.2.3.2 | 2.3.2 Requerimientos adicionales son agregados | 1d? | 2015-05-25 | 2015-05-25 | 28 | 68d | 0d | start no earlier than 2015-05-25 | EBR(Analista) | 8h | 744 |
| 30 | 1.2.3.3 | 2.3.3 Alcances de tiempo y costo | 1d | 2015-05-26 | 2015-05-26 | 29 | 68d | 0d | start no earlier than 2015-05-26 | EBR(Analista) | 8h | 744 |
| 31 | 1.2.3.4 | 2.3.4 Asignar a desarrolladores de proyecto | 1d | 2015-05-27 | 2015-05-27 | 30 | 68d | 0d | start no earlier than 2015-05-27 | EBR(Analista) | 8h | 744 |
| 32 | 1.2.3.5 | 2.3.5 Asignar las tareas a los desarrolladores de proyecto | 1d | 2015-05-28 | 2015-05-28 | 31 | 68d | 0d | start no earlier than 2015-05-28 | EBR(Analista) | 8h | 744 |
| 33 | 1.2.3.6 | 2.3.6 Administrar los cambios de requerimientos | 1d | 2015-05-29 | 2015-05-29 | 32 | 68d |  | start no earlier than 2015-05-29 | EBR(Analista) | 8h | 744 |
| 34 | 1.3 | **3 Diseño** | 12d | 2015-05-30 | 2015-06-12 |  |  |  |  |  | 88h | 6,776 |
| 35 | 1.3.1 | 3.1 Diagrama de actividades | 1d | 2015-05-30 | 2015-05-30 |  | 2d | 0d | start no earlier than 2015-05-30 | SHR(Diseñadora) | 8h | 616 |
| 36 | 1.3.2 | 3.2 Diagrama de casos de uso | 1d | 2015-06-01 | 2015-06-01 | 35 | 2d | 0d | start no earlier than 2015-06-01 | SHR(Diseñadora) | 8h | 616 |
| 37 | 1.3.3 | 3.3 Diagrama de secuencia | 1d | 2015-06-02 | 2015-06-02 | 36 | 2d | 0d | start no earlier than 2015-06-02 | SHR(Diseñadora) | 8h | 616 |
| 38 | 1.3.4 | 3.4 Diagrama de roles | 1d | 2015-06-03 | 2015-06-03 | 37 | 2d | 0d | start no earlier than 2015-06-03 | SHR(Diseñadora) | 8h | 616 |
| 39 | 1.3.5 | 3.5 Diagrama de interacción | 1d | 2015-06-04 | 2015-06-04 | 38 | 2d | 1d | start no earlier than 2015-06-04 | SHR(Diseñadora) | 8h | 616 |
| 40 | 1.3.6 | 3.6 Diagrama de componentes | 1d | 2015-06-06 | 2015-06-06 | 39 | 1d | 0d | start no earlier than 2015-06-06 | SHR(Diseñadora) | 8h | 616 |
| 41 | 1.3.7 | **3.7 Base de datos** | 2d | 2015-06-08 | 2015-06-09 | 40 |  |  |  |  | 16h | 1,232 |
| 42 | 1.3.7.1 | 3.7.1 Diagrama E-R | 1d | 2015-06-08 | 2015-06-08 |  | 1d | 0d |  | SHR(Diseñadora) | 8h | 616 |
| 43 | 1.3.7.2 | 3.7.2 Diagrama relacional | 1d | 2015-06-09 | 2015-06-09 | 42 | 59d |  | start no earlier than 2015-06-09 | SHR(Diseñadora) | 8h | 616 |
| 44 | 1.3.8 | 3.8 Maquetación de interfaces | 2d | 2015-06-10 | 2015-06-11 | 40 | 56d | 0d | start no earlier than 2015-06-10 | SHR(Diseñadora) | 16h | 1,232 |
| 45 | 1.3.9 | 3.9 Mapa de navegación | 1d | 2015-06-12 | 2015-06-12 | 44 | 56d |  | start no earlier than 2015-06-12 | SHR(Diseñadora) | 8h | 616 |
| 46 | 1.4 | **4 Desarrollo** | 46d | 2015-06-13 | 2015-08-08 | 96 |  |  |  |  | 324.99h | 22,749.3 |
| 47 | 1.4.1 | 4.1 Creación de DB | 2d | 2015-06-13 | 2015-06-15 |  | 54d |  | start no earlier than 2015-06-13 | AEGG(Programador) | 16h | 1,120 |
| 48 | 1.4.2 | **4.2 Módulo ( Administrador)** | 9d | 2015-06-16 | 2015-06-26 |  |  |  |  |  | 58h | 4,060 |
| 49 | 1.4.2.1 | 4.2.1 Interfaz | 3d | 2015-06-16 | 2015-06-18 |  | 3d | 0d |  | AEGG(Programador) | 24h | 1,680 |
| 50 | 1.4.2.2 | 4.2.2 Conexión a DB | 3d | 2015-06-19 | 2015-06-23 | 49 | 3d | 0d |  | AEGG(Programador) | 24h | 1,680 |
| 51 | 1.4.2.3 | 4.2.3 Alta de administrador | 1d | 2015-06-24 | 2015-06-24 | 50 | 46.94d | 0.94d | start no earlier than 2015-06-20 | AEGG(Programador) | 8h | 560 |
| 52 | 1.4.2.4 | 4.2.4 Baja de administrador | 0.5h | 2015-06-25 | 2015-06-25 | 51, 53SS | 46d |  | start no earlier than 2015-06-25 | AEGG(Programador) | 0.5h | 35 |
| 53 | 1.4.2.5 | 4.2.5 Actualizar de administrado | 0.5h | 2015-06-25 | 2015-06-26 | 54SF | 46d | 0d | start no earlier than 2015-06-25 | AEGG(Programador) | 0.5h | 35 |
| 54 | 1.4.2.6 | 4.2.6 Consulta de administrado | 0.5h | 2015-06-26 | 2015-06-26 | 55SS | 45.94d | 0d | start no earlier than 2015-06-26 | AEGG(Programador) | 0.5h | 35 |
| 55 | 1.4.2.7 | 4.2.7 Eliminación de administrado | 0.5h | 2015-06-26 | 2015-06-26 |  | 45.94d | 0d | start no earlier than 2015-06-26 | AEGG(Programador) | 0.5h | 35 |

| ID | WBS | Task | Duration | Start | Finish | Predecessors | Total slack | Free slack | Constraint | Resources | Work | Cost |
| --- | --- | --- | --- | --- | --- | --- | --- | --- | --- | --- | --- | --- |
| 56 | 1.4.3 | **4.3 Módulo (Maestros)** | 9d | 2015-06-27 | 2015-07-07 |  |  |  |  |  | 72h | 5,040 |
| 57 | 1.4.3.1 | 4.3.1 Interfaz | 2d | 2015-06-27 | 2015-06-29 |  | 0d |  | start no earlier than 2015-06-27 | AEGG(Programador) | 16h | 1,120 |
| 58 | 1.4.3.2 | 4.3.2 Conexión a DB | 2d | 2015-06-30 | 2015-07-01 | 57 | 0d |  |  | AEGG(Programador) | 16h | 1,120 |
| 59 | 1.4.3.3 | 4.3.3 Alta de Maestros | 1d | 2015-07-02 | 2015-07-02 | 58 | 0d |  |  | AEGG(Programador) | 8h | 560 |
| 60 | 1.4.3.4 | 4.3.4 Baja de Maestros | 1d | 2015-07-03 | 2015-07-03 | 59 | 0d |  |  | AEGG(Programador) | 8h | 560 |
| 61 | 1.4.3.5 | 4.3.5 Actualizar de Maestros | 1d | 2015-07-04 | 2015-07-04 | 60 | 0d |  | start no earlier than 2015-07-04 | AEGG(Programador) | 8h | 560 |
| 62 | 1.4.3.6 | 4.3.6 Consulta de Maestros | 1d | 2015-07-06 | 2015-07-06 | 61 | 0d |  | start no earlier than 2015-07-06 | AEGG(Programador) | 8h | 560 |
| 63 | 1.4.3.7 | 4.3.7 Eliminación de Maestros | 1d | 2015-07-07 | 2015-07-07 | 62 | 0d |  |  | AEGG(Programador) | 8h | 560 |
| 64 | 1.4.4 | **4.4 Modulo (Calificaciones)** | 9d | 2015-07-08 | 2015-07-20 |  |  |  |  |  | 72h | 5,040 |
| 65 | 1.4.4.1 | 4.4.1 Interfaz | 2d | 2015-07-08 | 2015-07-09 |  | 0d |  |  | AEGG(Programador) | 16h | 1,120 |
| 66 | 1.4.4.2 | 4.4.2 Conexión a DB | 2d | 2015-07-10 | 2015-07-13 | 65 | 0d |  |  | AEGG(Programador) | 16h | 1,120 |
| 67 | 1.4.4.3 | 4.4.3 Alta de calificaciones | 1d | 2015-07-14 | 2015-07-14 | 66 | 0d |  |  | AEGG(Programador) | 8h | 560 |
| 68 | 1.4.4.4 | 4.4.4 Baja de calificaciones | 1d | 2015-07-15 | 2015-07-15 | 67 | 0d |  |  | AEGG(Programador) | 8h | 560 |
| 69 | 1.4.4.5 | 4.4.5 Actualizar de calificaciones | 1d | 2015-07-16 | 2015-07-16 | 68 | 0d |  |  | AEGG(Programador) | 8h | 560 |
| 70 | 1.4.4.6 | 4.4.6 Consulta de calificaciones | 1d | 2015-07-17 | 2015-07-17 | 69 | 0d |  |  | AEGG(Programador) | 8h | 560 |
| 71 | 1.4.4.7 | 4.4.7 Eliminación de calificaciones | 1d | 2015-07-20 | 2015-07-20 | 70 | 0d |  |  | AEGG(Programador) | 8h | 560 |
| 72 | 1.4.5 | **4.5 Modulo (Alumnos)** | 8d | 2015-07-21 | 2015-07-29 |  |  |  |  |  | 64h | 4,480 |
| 73 | 1.4.5.1 | 4.4.1 Interfaz | 1d | 2015-07-21 | 2015-07-21 |  | 2d | 0d | start no earlier than 2015-07-21 | AEGG(Programador) | 8h | 560 |
| 74 | 1.4.5.2 | 4.4.2 Conexión a DB | 2d | 2015-07-22 | 2015-07-23 | 73 | 2d | 0d |  | AEGG(Programador) | 16h | 1,120 |
| 75 | 1.4.5.3 | 4.4.3 Alta de Alumnos | 1d | 2015-07-24 | 2015-07-24 | 74 | 2d | 0d |  | AEGG(Programador) | 8h | 560 |
| 76 | 1.4.5.4 | 4.4.4 Baja de Alumnos | 1d | 2015-07-25 | 2015-07-25 | 75 | 2d | 0d | start no earlier than 2015-07-24 | AEGG(Programador) | 8h | 560 |
| 77 | 1.4.5.5 | 4.4.5 Actualizar de Alumnos | 1d | 2015-07-27 | 2015-07-27 | 76 | 2d | 0d |  | AEGG(Programador) | 8h | 560 |
| 78 | 1.4.5.6 | 4.4.6 Consulta de Alumnos | 1d | 2015-07-28 | 2015-07-28 | 77 | 19d | 0d | start no earlier than 2015-07-27 | AEGG(Programador) | 8h | 560 |
| 79 | 1.4.5.7 | 4.4.7 Eliminación de Alumnos | 1d | 2015-07-29 | 2015-07-29 | 78 | 19d |  | start no earlier than 2015-07-29 | AEGG(Programador) | 8h | 560 |

| ID | WBS | Task | Duration | Start | Finish | Predecessors | Total slack | Free slack | Constraint | Resources | Work | Cost |
| --- | --- | --- | --- | --- | --- | --- | --- | --- | --- | --- | --- | --- |
| 80 | 1.4.6 | **4.6 Modulo (Documentación)** | 4d | 2015-07-30 | 2015-08-03 |  |  |  |  |  | 17.99h | 1,259.3 |
| 81 | 1.4.6.1 | 4.6.1 Interfaz | 1d | 2015-07-30 | 2015-07-30 |  | 3d | 0d |  | AEGG(Programador) | 8h | 560 |
| 82 | 1.4.6.2 | 4.6.2 Conexión a DB | 0.33h | 2015-07-31 | 2015-07-31 | 81, 83SS | 17.96d |  | start no earlier than 2015-07-30 | AEGG(Programador) | 0.33h | 23.1 |
| 83 | 1.4.6.3 | 4.6.3 Alta de documentos | 0.33h | 2015-07-31 | 2015-07-31 | 84SS | 17.96d | 0d | start no earlier than 2015-07-31 | AEGG(Programador) | 0.33h | 23.1 |
| 84 | 1.4.6.4 | 4.6.4 Baja de documentos | 0.33h | 2015-07-31 | 2015-07-31 |  | 16.9d | 0d | start no earlier than 2015-07-31 | AEGG(Programador) | 0.33h | 23.1 |
| 85 | 1.4.6.5 | 4.6.5 Actualizar de documentos | 1d | 2015-08-01 | 2015-08-01 | 84 | 15.94d | 0d | start no earlier than 2015-08-01 | AEGG(Programador) | 8h | 560 |
| 86 | 1.4.6.6 | 4.6.6 Consulta de documentos | 0.5h | 2015-08-03 | 2015-08-03 | 85, 87SS | 15.94d |  | start no earlier than 2015-08-03 | AEGG(Programador) | 0.5h | 35 |
| 87 | 1.4.6.7 | 4.6.7 Eliminación de documentos | 0.5h | 2015-08-03 | 2015-08-03 |  | 15.94d | 0d | start no earlier than 2015-08-03 | AEGG(Programador) | 0.5h | 35 |
| 88 | 1.4.7 | **4.7 Modulo (Usuarios)** | 5d | 2015-08-04 | 2015-08-08 |  |  |  |  |  | 25h | 1,750 |
| 89 | 1.4.7.1 | 4.7.1 Interfaz | 1d? | 2015-08-04 | 2015-08-04 |  | 4d | 1d |  | AEGG(Programador) | 8h | 560 |
| 90 | 1.4.7.2 | 4.7.2 Conexión a DB | 0.25h | 2015-08-06 | 2015-08-06 | 89, 91SS | 12.97d |  | start no earlier than 2015-08-05 | AEGG(Programador) | 0.25h | 17.5 |
| 91 | 1.4.7.3 | 4.7.3 Alta de Usuarios | 0.25h | 2015-08-06 | 2015-08-06 | 92SS | 12.97d | 0d | start no earlier than 2015-08-05 | AEGG(Programador) | 0.25h | 17.5 |
| 92 | 1.4.7.4 | 4.7.4 Baja de Usuarios | 0.25h | 2015-08-06 | 2015-08-06 | 93SS | 12.97d | 0d | start no earlier than 2015-08-06 | AEGG(Programador) | 0.25h | 17.5 |
| 93 | 1.4.7.5 | 4.7.5 Actualizar de Usuarios | 0.25h | 2015-08-06 | 2015-08-06 |  | 10.97d | 0d | start no earlier than 2015-08-06 | AEGG(Programador) | 0.25h | 17.5 |
| 94 | 1.4.7.6 | 4.7.6 Consulta de Usuarios | 1d? | 2015-08-07 | 2015-08-07 | 93 | 10d | 0d | start no earlier than 2015-08-07 | AEGG(Programador) | 8h | 560 |
| 95 | 1.4.7.7 | 4.7.7 Eliminación de Usuarios | 1d? | 2015-08-08 | 2015-08-08 | 94 | 10d |  | start no earlier than 2015-08-08 | AEGG(Programador) | 8h | 560 |
| 96 | 1.5 | **5 Pruebas** | 4d | 2015-08-10 | 2015-08-13 | 101 |  |  |  |  | 32h | 2,080 |
| 97 | 1.5.1 | 5.1 Pruebas unitarias | 1d | 2015-08-10 | 2015-08-10 |  | 0d |  | start no earlier than 2015-08-10 | EBR(Tester) | 8h | 520 |
| 98 | 1.5.2 | 5.2 Pruebas de integración | 1d | 2015-08-11 | 2015-08-11 | 97 | 0d |  |  | EBR(Tester) | 8h | 520 |
| 99 | 1.5.3 | 5.3 pruebas de rendimiento | 1d | 2015-08-12 | 2015-08-12 | 98 | 0d |  |  | EBR(Tester) | 8h | 520 |
| 100 | 1.5.4 | 5.4 Pruebas de sistema | 1d | 2015-08-13 | 2015-08-13 | 99 | 0d |  |  | EBR(Tester) | 8h | 520 |
| 101 | 1.6 | **6 Implementación** | 2d | 2015-08-14 | 2015-08-15 | 106 |  |  |  |  | 2h | 214 |
| 102 | 1.6.1 | 6.1 Elección del hosting | 0.5h | 2015-08-14 | 2015-08-14 |  | 4.81d | 0d | finish no earlier than 2015-08-14 | AEGG(Lider de proyecto) | 0.5h | 53.5 |
| 103 | 1.6.2 | 6.2 Pagar el hosting | 0.5h | 2015-08-15 | 2015-08-15 | 102 | 4.81d | 0d | start no earlier than 2015-08-14 | AEGG(Lider de proyecto) | 0.5h | 53.5 |
| 104 | 1.6.3 | 6.3 Copias archivos fuente | 0.5h | 2015-08-15 | 2015-08-15 | 103 | 4.81d | 0d | start no earlier than 2015-08-15 | AEGG(Lider de proyecto) | 0.5h | 53.5 |
| 105 | 1.6.4 | 6.4 Pruebas de sistema | 0.5h | 2015-08-15 | 2015-08-15 | 104 | 4.81d |  | start no earlier than 2015-08-15 | AEGG(Lider de proyecto) | 0.5h | 53.5 |

| ID | WBS | Task | Duration | Start | Finish | Predecessors | Total slack | Free slack | Constraint | Resources | Work | Cost |
| --- | --- | --- | --- | --- | --- | --- | --- | --- | --- | --- | --- | --- |
| 106 | 1.7 | **7 Cierre del proyecto** | 4d | 2015-08-17 | 2015-08-20 |  |  |  |  |  | 11h | 1,177 |
| 107 | 1.7.1 | 7.1 Carta de aceptación | 0.5h | 2015-08-17 | 2015-08-17 |  | 2.62d | 0d | start no earlier than 2015-08-17 | AEGG(Lider de proyecto) | 0.5h | 53.5 |
| 108 | 1.7.2 | 7.2 Acta de cierre del proyecto | 0.5h | 2015-08-17 | 2015-08-17 | 107 | 2.62d | 0.88d | start no earlier than 2015-08-17 | AEGG(Lider de proyecto) | 0.5h | 53.5 |
| 109 | 1.7.3 | 7.3 Evaluación de desempeño | 0.5h | 2015-08-18 | 2015-08-18 | 108 | 1.75d | 0d | start no earlier than 2015-08-18 | AEGG(Lider de proyecto) | 0.5h | 53.5 |
| 110 | 1.7.4 | 7.4 Liberación de recursos | 0.5h | 2015-08-18 | 2015-08-18 | 109 | 1.75d | 0.88d | start no earlier than 2015-08-18 | AEGG(Lider de proyecto) | 0.5h | 53.5 |
| 111 | 1.7.5 | 7.5 Lecciones aprendidas | 0.5h | 2015-08-19 | 2015-08-19 | 110 | 0.88d | 0d | start no earlier than 2015-08-19 | AEGG(Lider de proyecto) | 0.5h | 53.5 |
| 112 | 1.7.6 | 7.6 Informe final | 0.5h | 2015-08-19 | 2015-08-19 | 111 | 0.88d |  | start no earlier than 2015-08-19 | AEGG(Lider de proyecto) | 0.5h | 53.5 |
| 113 | 1.7.7 | 7.7 No se tiene respaldo de las versiones del proyecto | 1d | 2015-08-20 | 2015-08-20 | 112 | 0d |  | start no earlier than 2015-08-20 | AEGG(Lider de proyecto) | 8h | 856 |
